# Meridian Olefins - Unit 40 Expansion

How a schedule from Primavera P6 changed from version to version. A marks actual dates.

## Version 1 (data date 2026-09-07, saved 2026-11-16, file Meridian-U40_BL.xer)

Note of the change: Add VRSmartPlanPE: personal edition with 244 personal modules preloaded

| ID | WBS | Task | Duration | Start | Finish |
| --- | --- | --- | --- | --- | --- |
|  | U40 | **Unit 40** |  | 2026-09-07 | 2027-04-19 |
|  | CIV | **Civil** |  | 2026-09-07 | 2027-01-29 |
| CIV-0010 |  | Excavation and foundations - furnace area | 25d | 2026-09-07 | 2026-10-09 |
| CIV-0020 |  | Underground piping and duct bank | 30d | 2026-09-21 | 2026-10-30 |
| CIV-0030 |  | Equipment foundations - compressor house | 30d | 2026-10-05 | 2026-11-13 |
| CIV-0040 |  | Paving and grading | 20d | 2027-01-04 | 2027-01-29 |
|  | ELE | **Electrical** |  | 2026-12-14 | 2027-04-02 |
| ELE-0010 |  | Cable tray installation | 35d | 2026-12-14 | 2027-01-29 |
| ELE-0020 |  | Cable pulling | 40d | 2027-01-18 | 2027-03-12 |
| ELE-0030 |  | Terminations and megger | 30d | 2027-02-22 | 2027-04-02 |
|  | INS | **Instrumentation** |  | 2027-01-04 | 2027-04-09 |
| INS-0010 |  | Instrument stands and supports | 25d | 2027-01-04 | 2027-02-05 |
| INS-0020 |  | Tubing and impulse lines | 40d | 2027-01-25 | 2027-03-19 |
| INS-0030 |  | Loop checks | 25d | 2027-03-08 | 2027-04-09 |
|  | MEC | **Mechanical Equipment** |  | 2026-11-23 | 2027-02-05 |
| MEC-0020 |  | Set exchangers and drums | 25d | 2026-11-23 | 2026-12-25 |
| MEC-0010 |  | Set charge gas compressor | 15d | 2026-11-30 | 2026-12-18 |
| MEC-0030 |  | Set pumps and align | 25d | 2026-12-21 | 2027-01-22 |
| MEC-0040 |  | Column internals | 30d | 2026-12-28 | 2027-02-05 |
|  | MS | **Milestones** |  | 2026-09-07 | 2027-04-19 |
| MS-0010 |  | Notice to proceed | 0d | 2026-09-07 | 2026-09-07 |
| MS-0900 |  | Mechanical completion - Unit 40 | 0d | 2027-04-19 | 2027-04-19 |
|  | PIP | **Piping** |  | 2026-10-19 | 2027-04-02 |
| PIP-0010 |  | Shop spool fabrication receipt | 40d | 2026-10-19 | 2026-12-11 |
| PIP-0020 |  | Rack piping installation | 55d | 2026-12-14 | 2027-02-26 |
| PIP-0030 |  | Equipment hook-up piping | 45d | 2027-01-11 | 2027-03-12 |
| PIP-0040 |  | Hydrotest and reinstatement | 25d | 2027-03-01 | 2027-04-02 |
|  | STR | **Structural Steel** |  | 2026-10-26 | 2027-01-29 |
| STR-0010 |  | Pipe rack steel erection - rack A | 30d | 2026-10-26 | 2026-12-04 |
| STR-0030 |  | Compressor house steel | 25d | 2026-11-09 | 2026-12-11 |
| STR-0020 |  | Pipe rack steel erection - rack B | 30d | 2026-11-16 | 2026-12-25 |
| STR-0040 |  | Platforms, ladders and grating | 25d | 2026-12-28 | 2027-01-29 |

## Version 2 (data date 2026-10-05, saved 2026-11-16, file Meridian-U40_UPD01.xer)

Note of the change: Add VRSmartPlanPE: personal edition with 244 personal modules preloaded

Last finish stays 2027-04-19. Complete tasks 0 → 1.

Changed:

| ID | Task | Start | Finish | Complete |
| --- | --- | --- | --- | --- |
| CIV-0010 | Excavation and foundations - furnace area | 2026-09-07 A |  | 0% → 84% |
| CIV-0020 | Underground piping and duct bank | 2026-09-21 A |  | 0% → 35% |
| MS-0010 | Notice to proceed | 2026-09-07 A | 2026-09-07 A | 0% → 100% |

## Version 3 (data date 2026-11-02, saved 2026-10-31, file Meridian-U40_UPD02.xer)

Note of the change: VRSmartPlan (formerly VRProject) at vissrad.com/VRSmartPlan/: thirteen tools with VRControls; vrsmartplan.html page with download; vrproject.html redirects

Last finish stays 2027-04-19. Complete tasks 1 → 3.

Changed:

| ID | Task | Start | Finish | Complete |
| --- | --- | --- | --- | --- |
| CIV-0010 | Excavation and foundations - furnace area |  | 2026-10-09 → 2026-10-12 A (+3d) | 84% → 100% |
| CIV-0020 | Underground piping and duct bank |  | 2026-10-30 → 2026-11-01 A (+2d) | 35% → 100% |
| CIV-0030 | Equipment foundations - compressor house | 2026-10-05 A |  | 0% → 70% |
| PIP | **Piping** | 2026-10-19 → 2026-10-20 (+1d) |  |  |
| PIP-0010 | Shop spool fabrication receipt | 2026-10-19 → 2026-10-20 A (+1d) | 2026-12-11 → 2026-12-23 (+12d) | 0% → 21% |
| STR | **Structural Steel** | 2026-10-26 → 2026-10-27 (+1d) |  |  |
| STR-0010 | Pipe rack steel erection - rack A | 2026-10-26 → 2026-10-27 A (+1d) | 2026-12-04 → 2026-12-10 (+6d) | 0% → 15% |
