How a schedule from an exported table changed from version to version. A marks actual dates.

## Version 1 (saved 2026-09-18)

Note of the change: Add VissRadPlanner to the site and move the count to sixteen

| Task | Start | Finish |
| --- | --- | --- |
| Foundation — pile cap 01 | 2026-05-18 | 2026-07-07 |
| Foundation — pedestal group 02 | 2026-06-11 | 2026-07-31 |
| Foundation — equipment foundation 03 | 2026-07-07 | 2026-08-20 |
| Foundation — sump 04 | 2026-07-29 | 2026-09-18 |
| Foundation — duct bank 05 | 2026-08-24 | 2026-10-12 |
| Foundation — slab panel 06 | 2026-09-16 | 2026-10-26 |
| Foundation — pile cap 07 | 2026-10-06 | 2026-11-20 |
| Foundation — pedestal group 08 | 2026-10-28 | 2026-12-07 |
| Foundation — equipment foundation 09 | 2026-11-17 | 2026-12-23 |
| Foundation — sump 10 | 2026-12-04 | 2027-01-21 |
| Foundation — duct bank 11 | 2026-12-29 | 2027-02-03 |
| Foundation — slab panel 12 | 2027-01-15 | 2027-03-02 |
| Foundation — pile cap 13 | 2027-02-08 | 2027-03-17 |
| Foundation — pedestal group 14 | 2027-02-25 | 2027-04-15 |
| Structural steel erection — column line 01 | 2026-06-15 | 2026-07-07 |
| Structural steel erection — beam tier 02 | 2026-06-25 | 2026-07-14 |
| Structural steel erection — bracing bay 03 | 2026-07-03 | 2026-07-22 |
| Structural steel erection — platform 04 | 2026-07-13 | 2026-08-04 |
| Structural steel erection — stair run 05 | 2026-07-23 | 2026-08-11 |
| Structural steel erection — column line 06 | 2026-07-31 | 2026-08-19 |
| Structural steel erection — beam tier 07 | 2026-08-10 | 2026-08-31 |
| Structural steel erection — bracing bay 08 | 2026-08-19 | 2026-09-08 |
| Structural steel erection — platform 09 | 2026-08-28 | 2026-09-16 |
| Structural steel erection — stair run 10 | 2026-09-07 | 2026-09-24 |
| Structural steel erection — column line 11 | 2026-09-15 | 2026-10-07 |
| Structural steel erection — beam tier 12 | 2026-09-25 | 2026-10-16 |
| Pipe erection — line group 01 | 2026-10-05 | 2026-10-12 |
| Pipe erection — rack module 02 | 2026-10-07 | 2026-10-15 |
| Pipe erection — tie-in set 03 | 2026-10-12 | 2026-10-20 |
| Pipe erection — valve station 04 | 2026-10-15 | 2026-10-26 |
| Pipe erection — drain header 05 | 2026-10-20 | 2026-10-28 |
| Pipe erection — line group 06 | 2026-10-23 | 2026-11-02 |
| Pipe erection — rack module 07 | 2026-10-28 | 2026-11-05 |
| Pipe erection — tie-in set 08 | 2026-11-02 | 2026-11-10 |
| Pipe erection — valve station 09 | 2026-11-05 | 2026-11-13 |
| Pipe erection — drain header 10 | 2026-11-10 | 2026-11-19 |
| Pipe erection — line group 11 | 2026-11-13 | 2026-11-23 |
| Pipe erection — rack module 12 | 2026-11-18 | 2026-11-26 |
| Pipe erection — tie-in set 13 | 2026-11-23 | 2026-12-02 |
| Pipe erection — valve station 14 | 2026-11-26 | 2026-12-07 |
| Pipe erection — drain header 15 | 2026-12-01 | 2026-12-11 |
| Pipe erection — line group 16 | 2026-12-07 | 2026-12-15 |
| Equipment set and align — pump set 01 | 2026-07-06 | 2026-07-10 |
| Equipment set and align — compressor train 02 | 2026-07-08 | 2026-07-14 |
| Equipment set and align — exchanger 03 | 2026-07-10 | 2026-07-17 |
| Equipment set and align — vessel 04 | 2026-07-14 | 2026-07-20 |
| Equipment set and align — blower 05 | 2026-07-16 | 2026-07-23 |
| Equipment set and align — pump set 06 | 2026-07-20 | 2026-07-28 |
| Equipment set and align — compressor train 07 | 2026-07-23 | 2026-07-30 |
| Field weld — line group 01 | 2026-10-19 | 2026-10-21 |
| Field weld — rack module 02 | 2026-10-20 | 2026-10-22 |
| Field weld — tie-in set 03 | 2026-10-21 | 2026-10-26 |
| Field weld — valve station 04 | 2026-10-22 | 2026-10-26 |
| Field weld — drain header 05 | 2026-10-23 | 2026-10-28 |
| Field weld — line group 06 | 2026-10-26 | 2026-10-28 |
| Field weld — rack module 07 | 2026-10-27 | 2026-10-30 |
| Field weld — tie-in set 08 | 2026-10-28 | 2026-10-30 |
| Field weld — valve station 09 | 2026-10-29 | 2026-11-03 |
| Field weld — drain header 10 | 2026-10-30 | 2026-11-04 |
| Field weld — line group 11 | 2026-11-02 | 2026-11-05 |
| Field weld — rack module 12 | 2026-11-03 | 2026-11-06 |
| Field weld — tie-in set 13 | 2026-11-04 | 2026-11-06 |
| Field weld — valve station 14 | 2026-11-05 | 2026-11-10 |
| Field weld — drain header 15 | 2026-11-06 | 2026-11-11 |
| Field weld — line group 16 | 2026-11-09 | 2026-11-11 |
| Cable tray installation — tray run 01 | 2026-09-28 | 2026-10-06 |
| Cable tray installation — feeder group 02 | 2026-10-01 | 2026-10-09 |
| Cable tray installation — lighting branch 03 | 2026-10-06 | 2026-10-13 |
| Cable tray installation — grounding grid 04 | 2026-10-08 | 2026-10-15 |
| Cable tray installation — tray run 05 | 2026-10-12 | 2026-10-20 |

| Task | Start | Finish |
| --- | --- | --- |
| Cable tray installation — feeder group 06 | 2026-10-15 | 2026-10-21 |
| Cable tray installation — lighting branch 07 | 2026-10-19 | 2026-10-23 |
| Cable tray installation — grounding grid 08 | 2026-10-21 | 2026-10-28 |
| Cable tray installation — tray run 09 | 2026-10-23 | 2026-10-30 |
| Cable tray installation — feeder group 10 | 2026-10-27 | 2026-11-03 |
| Cable tray installation — lighting branch 11 | 2026-10-29 | 2026-11-06 |
| Instrument installation and loop check — loop group 01 | 2026-11-02 | 2026-11-09 |
| Instrument installation and loop check — transmitter set 02 | 2026-11-04 | 2026-11-12 |
| Instrument installation and loop check — control valve set 03 | 2026-11-09 | 2026-11-16 |
| Instrument installation and loop check — loop group 04 | 2026-11-11 | 2026-11-19 |
| Instrument installation and loop check — transmitter set 05 | 2026-11-16 | 2026-11-23 |
| Instrument installation and loop check — control valve set 06 | 2026-11-18 | 2026-11-25 |
| Instrument installation and loop check — loop group 07 | 2026-11-20 | 2026-11-30 |
| Instrument installation and loop check — transmitter set 08 | 2026-11-25 | 2026-12-01 |
| Instrument installation and loop check — control valve set 09 | 2026-11-27 | 2026-12-07 |
| Slab on grade — pile cap 01 | 2026-11-16 | 2027-01-05 |
| Slab on grade — pedestal group 02 | 2026-12-10 | 2027-01-26 |
| Slab on grade — equipment foundation 03 | 2027-01-01 | 2027-02-18 |
| Slab on grade — sump 04 | 2027-01-26 | 2027-03-12 |
| Slab on grade — duct bank 05 | 2027-02-17 | 2027-04-06 |
| Slab on grade — slab panel 06 | 2027-03-12 | 2027-04-21 |
| Slab on grade — pile cap 07 | 2027-04-01 | 2027-05-12 |
| Slab on grade — pedestal group 08 | 2027-04-21 | 2027-06-07 |

## Version 2 (saved 2026-09-22)

Note of the change: sync public demo: US customary units across planner, PCS and DEng

Last finish stays 2027-06-07.

Changed:

| Task | Start | Finish |
| --- | --- | --- |
| Structural steel erection — bracing bay 03 |  | 2026-07-22 → 2026-07-21 (-1d) |
| Cable tray installation — tray run 05 |  | 2026-10-20 → 2026-10-19 (-1d) |
| Cable tray installation — feeder group 06 | 2026-10-15 → 2026-10-14 (-1d) | 2026-10-21 → 2026-10-20 (-1d) |
| Cable tray installation — lighting branch 07 | 2026-10-19 → 2026-10-16 (-3d) | 2026-10-23 → 2026-10-22 (-1d) |
| Cable tray installation — grounding grid 08 | 2026-10-21 → 2026-10-20 (-1d) | 2026-10-28 → 2026-10-27 (-1d) |
| Cable tray installation — tray run 09 | 2026-10-23 → 2026-10-22 (-1d) | 2026-10-30 → 2026-10-29 (-1d) |
| Cable tray installation — feeder group 10 | 2026-10-27 → 2026-10-26 (-1d) | 2026-11-03 → 2026-11-02 (-1d) |
| Cable tray installation — lighting branch 11 | 2026-10-29 → 2026-10-28 (-1d) | 2026-11-06 → 2026-11-05 (-1d) |
